# 中联马来园区DCOM平台

Schedule from a web Gantt chart, 2025-12-30 to 2026-01-06.
Saturdays and Sundays are off

## Schedule

| ID | WBS | Task | Type | Duration | Start | Finish | inPeople |
| --- | --- | --- | --- | --- | --- | --- | --- |
| 2 | 1 | DCOM系统合同签订 | fixed start | 6d | 2025-12-30 | 2026-01-06 | 张意&杨玉 |
| 3 | 2 | 项目立项启动及启动会议 |  | 1d | 2025-12-30 | 2025-12-30 | 赵红光 |
| 4 | 3 | DCOM系统硬件设备采购 |  | 1d | 2025-12-30 | 2025-12-30 | 张意&杨玉 |
| 5 | 4 | 硬件设备发货及海运报关 |  | 1d | 2025-12-30 | 2025-12-30 | 张意&杨玉 |
| 6 | 5 | 1#楼系统交付 |  | 1d | 2025-12-30 | 2025-12-30 |  |
| 7 | 6 | 2#楼系统交付 |  | 1d | 2025-12-30 | 2025-12-30 |  |
| 8 | 7 | 3#楼系统交付 |  | 1d | 2025-12-30 | 2025-12-30 |  |
| 9 | 8 | 4#楼系统交付 |  | 1d | 2025-12-30 | 2025-12-30 |  |
| 10 | 9 | 园区网络施工及设备安装 |  | 1d | 2025-12-30 | 2025-12-30 |  |
| 11 | 10 | 园区网络及设备调试 |  | 1d | 2025-12-30 | 2025-12-30 |  |
| 12 | 11 | DCOM平台环境部署 |  | 1d | 2025-12-30 | 2025-12-30 |  |
| 13 | 12 | 1#楼南向数据接入 |  | 1d | 2025-12-30 | 2025-12-30 |  |
| 14 | 13 | 2#楼南向数据接入 |  | 1d | 2025-12-30 | 2025-12-30 |  |
| 15 | 14 | 3#楼南向数据接入 |  | 1d | 2025-12-30 | 2025-12-30 |  |
| 16 | 15 | 4#楼南向数据接入 |  | 1d | 2025-12-30 | 2025-12-30 |  |
| 17 | 16 | DCOM平台数据上线 |  | 1d | 2025-12-30 | 2025-12-30 |  |
| 18 | 17 | DCOM平台北向数据上传 |  | 1d | 2025-12-30 | 2025-12-30 |  |
| 19 | 18 | DCOM平台北向数据验收 |  | 1d | 2025-12-30 | 2025-12-30 |  |
| 20 | 19 | DCOM平台监控功能上线 |  | 1d | 2025-12-30 | 2025-12-30 |  |
| 21 | 20 | DCOM平台运维功能开发 |  | 1d | 2025-12-30 | 2025-12-30 |  |
| 22 | 21 | DCOM平台验收测试 |  | 1d | 2025-12-30 | 2025-12-30 |  |
| 23 | 22 | DCOM平台培训及验收 |  | 1d | 2025-12-30 | 2025-12-30 |  |

Notes:
- 2: 商务跟进
- 4: 商务跟进
- 5: 商务跟进
- 13: 按机房楼系统交付后T+5天考虑
- 14: 按机房楼系统交付后T+5天考虑
- 15: 按机房楼系统交付后T+5天考虑
- 18: 完成北向数据上传的配置及数据推送，数据核对和相关测试
- 19: 北向数据治理及数据验收
- 21: 详见开发任务进度计划表
- 22: 后期根据实际情况协商安排
- 23: 后期根据实际情况协商安排
